# Karaoke

Schedule from MS Project, 2025-12-01 to 2026-10-29, costs in ₫, A marks actual dates.

## Calendars

- Standard: Mon-Fri 08:00-12:00, 13:00-17:00; Sat-Sun off.

## Resources

| Resource | Rate |
| --- | --- |
| Nguyễn Hoàng An | 187500 |
| Trần Minh Thư | 75000 |
| Lê Quang Hùng | 140625 |
| Phạm Thị Mai Lan | 140625 |
| Đặng Văn Khải | 140625 |
| Bùi Việt Dũng | 93750 |
| Võ Thành Long | 93750 |
| Hoàng Gia Bảo | 93750 |
| Nguyễn Ngọc Anh | 93750 |
| Trịnh Văn Hiếu | 93750 |

## Schedule

| ID | WBS | Task | Duration | Start | Finish | Predecessors | Complete | Remaining | Baseline start | Baseline finish | Baseline duration | Total slack | Resources | Work | Actual work | Cost | Baseline cost | Actual cost |
| --- | --- | --- | --- | --- | --- | --- | --- | --- | --- | --- | --- | --- | --- | --- | --- | --- | --- | --- |
| 1 | 1 | **Dự án: Xây dựng Phần mềm quản lý karaoke** | 239d | 2025-12-01 A | 2026-10-29 |  | 44% | 134d | 2025-12-01 | 2026-10-29 | 239d | 0d |  | 3304h | 1840h | 384,225,000 | 384,225,000 | 217,200,000 |
| 2 | 1.1 | **1. Thu thập yêu cầu** | 7d | 2025-12-01 A | 2025-12-09 A |  | 100% |  | 2025-12-01 | 2025-12-09 | 7d |  |  | 112h | 112h | 14,625,000 | 14,625,000 | 14,625,000 |
| 3 | 1.1.1 | 1.1. Tìm hiểu yêu cầu thực tế của Khách hàng (Khảo sát nghiệp vụ tại cơ sở karaoke) | 5d | 2025-12-01 A | 2025-12-05 A |  | 100% |  | 2025-12-01 | 2025-12-05 | 5d |  | Đặng Văn Khải; Nguyễn Ngọc Anh | 80h | 80h | 9,375,000 | 9,375,000 | 9,375,000 |
| 4 | 1.1.2 | 1.2. Xác nhận yêu cầu khách hàng (Biên bản chốt yêu cầu) | 2d | 2025-12-08 A | 2025-12-09 A | 3 | 100% |  | 2025-12-08 | 2025-12-09 | 2d |  | Đặng Văn Khải; Nguyễn Hoàng An | 32h | 32h | 5,250,000 | 5,250,000 | 5,250,000 |
| 5 | 1.2 | **2. Khởi tạo dự án** | 3d | 2025-12-10 A | 2025-12-12 A |  | 100% |  | 2025-12-10 | 2025-12-12 | 3d |  |  | 40h | 40h | 5,700,000 | 5,700,000 | 5,700,000 |
| 6 | 1.2.1 | 2.1. Lập điều lệ dự án (Project Charter) | 2d | 2025-12-10 A | 2025-12-11 A | 4 | 100% |  | 2025-12-10 | 2025-12-11 | 2d |  | Nguyễn Hoàng An; Trần Minh Thư | 32h | 32h | 4,200,000 | 4,200,000 | 4,200,000 |
| 7 | 1.2.2 | 2.2. Xác định nguồn lực (Lập danh sách đội dự án) | 1d | 2025-12-12 A | 2025-12-12 A | 6 | 100% |  | 2025-12-12 | 2025-12-12 | 1d |  | Nguyễn Hoàng An | 8h | 8h | 1,500,000 | 1,500,000 | 1,500,000 |
| 8 | 1.3 | **3. Lập kế hoạch thực hiện dự án** | 8d | 2025-12-15 A | 2025-12-24 A |  | 100% |  | 2025-12-15 | 2025-12-24 | 8d |  |  | 64h | 64h | 12,000,000 | 12,000,000 | 12,000,000 |
| 9 | 1.3.1 | 3.1. Kế hoạch thực hiện dự án sơ bộ | 3d | 2025-12-15 A | 2025-12-17 A | 7 | 100% |  | 2025-12-15 | 2025-12-17 | 3d |  | Nguyễn Hoàng An | 24h | 24h | 4,500,000 | 4,500,000 | 4,500,000 |
| 10 | 1.3.2 | 3.2. Kế hoạch thực hiện dự án chi tiết (Lập kế hoạch trên MS Project) | 5d | 2025-12-18 A | 2025-12-24 A | 9 | 100% |  | 2025-12-18 | 2025-12-24 | 5d |  | Nguyễn Hoàng An | 40h | 40h | 7,500,000 | 7,500,000 | 7,500,000 |
| 11 | 1.4 | **4. Xây dựng** | 216d | 2025-12-25 A | 2026-10-22 |  | 40% | 129d | 2025-12-25 | 2026-10-22 | 216d | 0d |  | 3016h | 1624h | 342,000,000 | 342,000,000 | 184,875,000 |
| 12 | 1.4.1 | **4.1. Xác định yêu cầu (Specification)** | 16d | 2025-12-25 A | 2026-01-15 A |  | 100% |  | 2025-12-25 | 2026-01-13 | 14d |  |  | 256h | 256h | 30,000,000 | 26,250,000 | 30,000,000 |
| 13 | 1.4.1.1 | 4.1.1. Xác định yêu cầu khách hàng (Phỏng vấn chi tiết) | 3d | 2025-12-25 A | 2025-12-29 A | 10 | 100% |  | 2025-12-25 | 2025-12-29 | 3d |  | Đặng Văn Khải; Nguyễn Ngọc Anh | 48h | 48h | 5,625,000 | 5,625,000 | 5,625,000 |
| 14 | 1.4.1.2 | 4.1.2. Xác định mục đích phần mềm | 1d | 2025-12-30 A | 2025-12-30 A | 13 | 100% |  | 2025-12-30 | 2025-12-30 | 1d |  | Đặng Văn Khải; Nguyễn Ngọc Anh | 16h | 16h | 1,875,000 | 1,875,000 | 1,875,000 |
| 15 | 1.4.1.3 | 4.1.3. Xác định các chức năng phần mềm (Tài liệu đặc tả yêu cầu - SRS) | 12d | 2025-12-31 A | 2026-01-15 A | 14 | 100% |  | 2025-12-31 | 2026-01-13 | 10d |  | Đặng Văn Khải; Nguyễn Ngọc Anh | 192h | 192h | 22,500,000 | 18,750,000 | 22,500,000 |
| 16 | 1.4.2 | **4.2. Phân tích (Analysis)** | 36d | 2026-01-16 A | 2026-03-06 A |  | 100% |  | 2026-01-14 | 2026-03-04 | 36d |  |  | 576h | 576h | 67,500,000 | 67,500,000 | 67,500,000 |
| 17 | 1.4.2.1 | 4.2.1. Phân tích yêu cầu khách hàng | 3d | 2026-01-16 A | 2026-01-20 A | 15 | 100% |  | 2026-01-14 | 2026-01-16 | 3d |  | Đặng Văn Khải; Nguyễn Ngọc Anh | 48h | 48h | 5,625,000 | 5,625,000 | 5,625,000 |
| 18 | 1.4.2.2 | 4.2.2. Phân tích yêu cầu phần mềm | 3d | 2026-01-21 A | 2026-01-23 A | 17 | 100% |  | 2026-01-19 | 2026-01-21 | 3d |  | Đặng Văn Khải; Nguyễn Ngọc Anh | 48h | 48h | 5,625,000 | 5,625,000 | 5,625,000 |
| 19 | 1.4.2.3 | **4.2.3. Phân tích chức năng nghiệp vụ** | 14d | 2026-01-24 A | 2026-02-12 A |  | 100% |  | 2026-01-22 | 2026-02-10 | 14d |  |  | 224h | 224h | 26,250,000 | 26,250,000 | 26,250,000 |
| 20 | 1.4.2.3.1 | 4.2.3.1. Phân tích chức năng Quản lý Đặt phòng (Booking) | 2d | 2026-01-24 A | 2026-01-27 A | 18 | 100% |  | 2026-01-22 | 2026-01-23 | 2d |  | Đặng Văn Khải; Nguyễn Ngọc Anh | 32h | 32h | 3,750,000 | 3,750,000 | 3,750,000 |
| 21 | 1.4.2.3.2 | 4.2.3.2. Phân tích chức năng Quản lý Phòng hát (Sơ đồ phòng, trạng thái) | 2d | 2026-01-28 A | 2026-01-29 A | 20 | 100% |  | 2026-01-26 | 2026-01-27 | 2d |  | Đặng Văn Khải; Nguyễn Ngọc Anh | 32h | 32h | 3,750,000 | 3,750,000 | 3,750,000 |
| 22 | 1.4.2.3.3 | 4.2.3.3. Phân tích chức năng Quản lý Dịch vụ & Kho (Order, kho đồ ăn/uống) | 3d | 2026-01-30 A | 2026-02-03 A | 21 | 100% |  | 2026-01-28 | 2026-01-30 | 3d |  | Đặng Văn Khải; Nguyễn Ngọc Anh | 48h | 48h | 5,625,000 | 5,625,000 | 5,625,000 |
| 23 | 1.4.2.3.4 | 4.2.3.4. Phân tích chức năng Tính tiền & Thanh toán (Check-out, in hóa đơn) | 3d | 2026-02-04 A | 2026-02-06 A | 22 | 100% |  | 2026-02-02 | 2026-02-04 | 3d |  | Đặng Văn Khải; Nguyễn Ngọc Anh | 48h | 48h | 5,625,000 | 5,625,000 | 5,625,000 |
| 24 | 1.4.2.3.5 | 4.2.3.5. Phân tích chức năng Quản lý Khách hàng & Khuyến mãi | 2d | 2026-02-07 A | 2026-02-10 A | 23 | 100% |  | 2026-02-05 | 2026-02-06 | 2d |  | Đặng Văn Khải; Nguyễn Ngọc Anh | 32h | 32h | 3,750,000 | 3,750,000 | 3,750,000 |
| 25 | 1.4.2.3.6 | 4.2.3.6. Phân tích chức năng Báo cáo & Thống kê (Doanh thu, tồn kho) | 2d | 2026-02-11 A | 2026-02-12 A | 24 | 100% |  | 2026-02-09 | 2026-02-10 | 2d |  | Đặng Văn Khải; Nguyễn Ngọc Anh | 32h | 32h | 3,750,000 | 3,750,000 | 3,750,000 |

| ID | WBS | Task | Duration | Start | Finish | Predecessors | Complete | Remaining | Baseline start | Baseline finish | Baseline duration | Total slack | Resources | Work | Actual work | Cost | Baseline cost | Actual cost |
| --- | --- | --- | --- | --- | --- | --- | --- | --- | --- | --- | --- | --- | --- | --- | --- | --- | --- | --- |
| 26 | 1.4.2.4 | **4.2.4. Phân tích chức năng hệ thống** | 7d | 2026-02-13 A | 2026-02-23 A |  | 100% |  | 2026-02-11 | 2026-02-20 | 8d |  |  | 128h | 128h | 15,000,000 | 15,000,000 | 15,000,000 |
| 27 | 1.4.2.4.1 | 4.2.4.1. Phân tích chức năng Đăng nhập/Đăng ký/Phân quyền | 1d | 2026-02-13 A | 2026-02-13 A | 25 | 100% |  | 2026-02-11 | 2026-02-11 | 1d |  | Đặng Văn Khải; Nguyễn Ngọc Anh | 16h | 16h | 1,875,000 | 1,875,000 | 1,875,000 |
| 28 | 1.4.2.4.2 | 4.2.4.2. Phân tích chức năng Phân quyền người dùng (Admin, Quản lý, Thu ngân, Phục vụ) | 2d | 2026-02-14 A | 2026-02-17 A | 27 | 100% |  | 2026-02-12 | 2026-02-13 | 2d |  | Đặng Văn Khải; Nguyễn Ngọc Anh | 32h | 32h | 3,750,000 | 3,750,000 | 3,750,000 |
| 29 | 1.4.2.4.3 | 4.2.4.3. Phân tích chức năng Cấu hình hệ thống (Thông tin quán, cài đặt thuế/VAT) | 1d | 2026-02-18 A | 2026-02-18 A | 28 | 100% |  | 2026-02-16 | 2026-02-16 | 1d |  | Đặng Văn Khải; Nguyễn Ngọc Anh | 16h | 16h | 1,875,000 | 1,875,000 | 1,875,000 |
| 30 | 1.4.2.4.4 | 4.2.4.4. Phân tích chức năng Cấu hình nghiệp vụ (Cài đặt giá phòng, khung giờ, loại phòng) | 2d | 2026-02-19 A | 2026-02-20 A | 29 | 100% |  | 2026-02-17 | 2026-02-18 | 2d |  | Đặng Văn Khải; Nguyễn Ngọc Anh | 32h | 32h | 3,750,000 | 3,750,000 | 3,750,000 |
| 31 | 1.4.2.4.5 | 4.2.4.5. Phân tích chức năng Cấu hình thiết bị (Máy in hóa đơn, máy in bếp/bar) | 1d | 2026-02-21 A | 2026-02-23 A | 30 | 100% |  | 2026-02-19 | 2026-02-19 | 1d |  | Đặng Văn Khải; Nguyễn Ngọc Anh | 16h | 16h | 1,875,000 | 1,875,000 | 1,875,000 |
| 32 | 1.4.2.4.6 | 4.2.4.6. Phân tích chức năng Sao lưu (Backup) và Phục hồi (Restore) dữ liệu | 1d | 2026-02-22 A | 2026-02-23 A | 31 | 100% |  | 2026-02-20 | 2026-02-20 | 1d |  | Đặng Văn Khải; Nguyễn Ngọc Anh | 16h | 16h | 1,875,000 | 1,875,000 | 1,875,000 |
| 33 | 1.4.2.5 | **4.2.5. Tạo các sơ đồ luồng dữ liệu (DFD)** | 5d | 2026-02-25 A | 2026-03-03 A |  | 100% |  | 2026-02-23 | 2026-02-27 | 5d |  |  | 80h | 80h | 9,375,000 | 9,375,000 | 9,375,000 |
| 34 | 1.4.2.5.1 | 4.2.5.1. Sơ đồ mức 0 (Context Diagram) | 1d | 2026-02-25 A | 2026-02-25 A | 32 | 100% |  | 2026-02-23 | 2026-02-23 | 1d |  | Đặng Văn Khải; Nguyễn Ngọc Anh | 16h | 16h | 1,875,000 | 1,875,000 | 1,875,000 |
| 35 | 1.4.2.5.2 | 4.2.5.2. Sơ đồ mức 1 (DFD Level 1) | 2d | 2026-02-26 A | 2026-02-27 A | 34 | 100% |  | 2026-02-24 | 2026-02-25 | 2d |  | Đặng Văn Khải; Nguyễn Ngọc Anh | 32h | 32h | 3,750,000 | 3,750,000 | 3,750,000 |
| 36 | 1.4.2.5.3 | 4.2.5.3. Sơ đồ mức 2 (DFD Level 2 cho các chức năng chính) | 2d | 2026-02-28 A | 2026-03-03 A | 35 | 100% |  | 2026-02-26 | 2026-02-27 | 2d |  | Đặng Văn Khải; Nguyễn Ngọc Anh | 32h | 32h | 3,750,000 | 3,750,000 | 3,750,000 |
| 37 | 1.4.2.6 | 4.2.6. Phân tích cơ sở dữ liệu | 3d | 2026-03-04 A | 2026-03-06 A | 36 | 100% |  | 2026-03-02 | 2026-03-04 | 3d |  | Đặng Văn Khải; Nguyễn Ngọc Anh | 48h | 48h | 5,625,000 | 5,625,000 | 5,625,000 |
| 38 | 1.4.3 | **4.3. Thiết kế (Design)** | 30d | 2026-03-07 A | 2026-04-17 A |  | 100% |  | 2026-03-05 | 2026-04-17 | 32d |  |  | 752h | 752h | 81,750,000 | 85,500,000 | 81,750,000 |
| 39 | 1.4.3.1 | 4.3.1. Thiết kế giao diện phần mềm (UI/UX - Wireframe, Mockup) | 8d | 2026-03-07 A | 2026-03-18 A | 37 | 100% |  | 2026-03-05 | 2026-03-18 | 10d |  | Đặng Văn Khải; Nguyễn Ngọc Anh | 128h | 128h | 15,000,000 | 18,750,000 | 15,000,000 |
| 40 | 1.4.3.2 | 4.3.2. Thiết kế cơ sở dữ liệu (Sơ đồ quan hệ thực thể - ERD, Lược đồ CSDL) | 5d | 2026-03-19 A | 2026-03-25 A | 39 | 100% |  | 2026-03-19 | 2026-03-25 | 5d |  | Bùi Việt Dũng; Lê Quang Hùng | 80h | 80h | 9,375,000 | 9,375,000 | 9,375,000 |
| 41 | 1.4.3.3 | **4.3.3. Thiết kế chức năng (Thiết kế chi tiết cho từng module)** | 17d | 2026-03-26 A | 2026-04-17 A |  | 100% |  | 2026-03-26 | 2026-04-17 | 17d |  |  | 544h | 544h | 57,375,000 | 57,375,000 | 57,375,000 |
| 42 | 1.4.3.3.1 | 4.3.3.1. Thiết kế Module Đặt phòng | 2d | 2026-03-26 A | 2026-03-27 A | 40 | 100% |  | 2026-03-26 | 2026-03-27 | 2d |  | Bùi Việt Dũng; Hoàng Gia Bảo; Lê Quang Hùng; Võ Thành Long | 64h | 64h | 6,750,000 | 6,750,000 | 6,750,000 |
| 43 | 1.4.3.3.2 | 4.3.3.2. Thiết kế Module Quản lý phòng | 2d | 2026-03-30 A | 2026-03-31 A | 42 | 100% |  | 2026-03-30 | 2026-03-31 | 2d |  | Bùi Việt Dũng; Hoàng Gia Bảo; Lê Quang Hùng; Võ Thành Long | 64h | 64h | 6,750,000 | 6,750,000 | 6,750,000 |
| 44 | 1.4.3.3.3 | 4.3.3.3. Thiết kế Module Dịch vụ & Kho | 3d | 2026-04-01 A | 2026-04-03 A | 43 | 100% |  | 2026-04-01 | 2026-04-03 | 3d |  | Bùi Việt Dũng; Hoàng Gia Bảo; Lê Quang Hùng; Võ Thành Long | 96h | 96h | 10,125,000 | 10,125,000 | 10,125,000 |
| 45 | 1.4.3.3.4 | 4.3.3.4. Thiết kế Module Tính tiền & Thanh toán | 3d | 2026-04-06 A | 2026-04-08 A | 44 | 100% |  | 2026-04-06 | 2026-04-08 | 3d |  | Bùi Việt Dũng; Hoàng Gia Bảo; Lê Quang Hùng; Võ Thành Long | 96h | 96h | 10,125,000 | 10,125,000 | 10,125,000 |
| 46 | 1.4.3.3.5 | 4.3.3.5. Thiết kế Module Khách hàng & Khuyến mãi | 2d | 2026-04-09 A | 2026-04-10 A | 45 | 100% |  | 2026-04-09 | 2026-04-10 | 2d |  | Bùi Việt Dũng; Hoàng Gia Bảo; Lê Quang Hùng; Võ Thành Long | 64h | 64h | 6,750,000 | 6,750,000 | 6,750,000 |
| 47 | 1.4.3.3.6 | 4.3.3.6. Thiết kế Module Báo cáo | 2d | 2026-04-13 A | 2026-04-14 A | 46 | 100% |  | 2026-04-13 | 2026-04-14 | 2d |  | Bùi Việt Dũng; Hoàng Gia Bảo; Lê Quang Hùng; Võ Thành Long | 64h | 64h | 6,750,000 | 6,750,000 | 6,750,000 |
| 48 | 1.4.3.3.7 | 4.3.3.7. Thiết kế Module Hệ thống (Đăng nhập, phân quyền) | 3d | 2026-04-15 A | 2026-04-17 A | 47 | 100% |  | 2026-04-15 | 2026-04-17 | 3d |  | Bùi Việt Dũng; Hoàng Gia Bảo; Lê Quang Hùng; Võ Thành Long | 96h | 96h | 10,125,000 | 10,125,000 | 10,125,000 |
| 49 | 1.4.4 | **4.4. Lập trình (Implementation)** | 84d | 2026-04-20 A | 2026-08-13 |  | 6% | 79d | 2026-04-20 | 2026-08-13 | 84d | 0d |  | 848h | 40h | 91,500,000 | 91,500,000 | 5,625,000 |
| 50 | 1.4.4.1 | 4.4.1. Lập trình thư viện dùng chung & Cấu hình môi trường | 5d | 2026-04-20 A | 2026-04-24 A | 48 | 100% |  | 2026-04-20 | 2026-04-24 | 5d |  | Lê Quang Hùng | 40h | 40h | 5,625,000 | 5,625,000 | 5,625,000 |
| 51 | 1.4.4.2 | 4.4.2. Lập trình Module Hệ thống (Đăng nhập, phân quyền) | 7d | 2026-04-27 | 2026-05-05 | 50 |  |  | 2026-04-27 | 2026-05-05 | 7d | 0d | Bùi Việt Dũng; Lê Quang Hùng | 112h |  | 13,125,000 | 13,125,000 |  |
| 52 | 1.4.4.3 | 4.4.3. Lập trình Module Quản lý Phòng hát | 10d | 2026-05-06 | 2026-05-19 | 51 |  |  | 2026-05-06 | 2026-05-19 | 10d | 0d | Võ Thành Long | 80h |  | 7,500,000 | 7,500,000 |  |
| 53 | 1.4.4.4 | 4.4.4. Lập trình Module Quản lý Dịch vụ & Kho | 15d | 2026-05-20 | 2026-06-09 | 52 |  |  | 2026-05-20 | 2026-06-09 | 15d | 0d | Hoàng Gia Bảo | 120h |  | 11,250,000 | 11,250,000 |  |
| 54 | 1.4.4.5 | 4.4.5. Lập trình Module Đặt phòng | 10d | 2026-06-10 | 2026-06-23 | 53 |  |  | 2026-06-10 | 2026-06-23 | 10d | 0d | Bùi Việt Dũng | 80h |  | 7,500,000 | 7,500,000 |  |
| 55 | 1.4.4.6 | 4.4.6. Lập trình Module Tính tiền & Thanh toán | 15d | 2026-06-24 | 2026-07-14 | 54 |  |  | 2026-06-24 | 2026-07-14 | 15d | 0d | Lê Quang Hùng; Võ Thành Long | 240h |  | 28,125,000 | 28,125,000 |  |
| 56 | 1.4.4.7 | 4.4.7. Lập trình Module Quản lý Khách hàng & Khuyến mãi | 7d | 2026-07-15 | 2026-07-23 | 55 |  |  | 2026-07-15 | 2026-07-23 | 7d | 0d | Hoàng Gia Bảo | 56h |  | 5,250,000 | 5,250,000 |  |
| 57 | 1.4.4.8 | 4.4.8. Lập trình Module Báo cáo | 10d | 2026-07-24 | 2026-08-06 | 56 |  |  | 2026-07-24 | 2026-08-06 | 10d | 0d | Bùi Việt Dũng | 80h |  | 7,500,000 | 7,500,000 |  |
| 58 | 1.4.4.9 | 4.4.9. Tích hợp các module | 5d | 2026-08-07 | 2026-08-13 | 57 |  |  | 2026-08-07 | 2026-08-13 | 5d | 0d | Lê Quang Hùng | 40h |  | 5,625,000 | 5,625,000 |  |

| ID | WBS | Task | Type | Duration | Start | Finish | Predecessors | Baseline start | Baseline finish | Baseline duration | Total slack | Resources | Work | Cost | Baseline cost |
| --- | --- | --- | --- | --- | --- | --- | --- | --- | --- | --- | --- | --- | --- | --- | --- |
| 59 | 1.4.5 | **4.5. Kiểm thử (Testing)** |  | 38d | 2026-08-14 | 2026-10-06 |  | 2026-08-14 | 2026-10-06 | 38d | 0d |  | 408h | 46,875,000 | 46,875,000 |
| 60 | 1.4.5.1 | 4.5.1. Thiết kế kiểm thử (Viết Test Case) |  | 10d | 2026-08-14 | 2026-08-27 | 58 | 2026-08-14 | 2026-08-27 | 10d | 0d | Phạm Thị Mai Lan | 80h | 11,250,000 | 11,250,000 |
| 61 | 1.4.5.2 | 4.5.2. Tài liệu kiểm thử và cài đặt môi trường (Test Document & Staging Env) |  | 3d | 2026-08-28 | 2026-09-01 | 60 | 2026-08-28 | 2026-09-01 | 3d | 0d | Phạm Thị Mai Lan; Trịnh Văn Hiếu | 48h | 5,625,000 | 5,625,000 |
| 62 | 1.4.5.3 | 4.5.3. Thực thi kiểm thử (Unit Test, Integration Test, System Test) |  | 15d | 2026-09-02 | 2026-09-22 | 61 | 2026-09-02 | 2026-09-22 | 15d | 0d | Trịnh Văn Hiếu | 120h | 11,250,000 | 11,250,000 |
| 63 | 1.4.5.4 | 4.5.4. Báo cáo lỗi và theo dõi (Bug Tracking) |  | 10d | 2026-09-23 | 2026-10-06 | 62 | 2026-09-23 | 2026-10-06 | 10d | 0d | Phạm Thị Mai Lan; Trịnh Văn Hiếu | 160h | 18,750,000 | 18,750,000 |
| 64 | 1.4.6 | **4.6. Chuyển giao (Deployment)** |  | 12d | 2026-10-07 | 2026-10-22 |  | 2026-10-07 | 2026-10-22 | 12d | 0d |  | 176h | 24,375,000 | 24,375,000 |
| 65 | 1.4.6.1 | 4.6.1. Khách hàng duyệt dự án (User Acceptance Test - UAT) |  | 5d | 2026-10-07 | 2026-10-13 | 63 | 2026-10-07 | 2026-10-13 | 5d | 0d | Đặng Văn Khải; Phạm Thị Mai Lan | 80h | 11,250,000 | 11,250,000 |
| 66 | 1.4.6.2 | 4.6.2. Bàn giao phần mềm cho khách hàng (Triển khai trên máy chủ thật) |  | 2d | 2026-10-14 | 2026-10-15 | 65 | 2026-10-14 | 2026-10-15 | 2d | 0d | Lê Quang Hùng | 16h | 2,250,000 | 2,250,000 |
| 67 | 1.4.6.3 | 4.6.3. Đào tạo, huấn luyện cho khách hàng (Training) |  | 3d | 2026-10-16 | 2026-10-20 | 66 | 2026-10-16 | 2026-10-20 | 3d | 0d | Đặng Văn Khải; Nguyễn Ngọc Anh | 48h | 5,625,000 | 5,625,000 |
| 68 | 1.4.6.4 | 4.6.4. Đánh giá và bảo trì (Bàn giao tài liệu, kế hoạch bảo trì) |  | 2d | 2026-10-21 | 2026-10-22 | 67 | 2026-10-21 | 2026-10-22 | 2d | 0d | Lê Quang Hùng; Nguyễn Hoàng An | 32h | 5,250,000 | 5,250,000 |
| 69 | 1.5 | **5. Kết thúc dự án** |  | 5d | 2026-10-23 | 2026-10-29 |  | 2026-10-23 | 2026-10-29 | 5d | 0d |  | 72h | 9,900,000 | 9,900,000 |
| 70 | 1.5.1 | 5.1. Họp tổng kết dự án |  | 1d | 2026-10-23 | 2026-10-23 | 68 | 2026-10-23 | 2026-10-23 | 1d | 0d | Nguyễn Hoàng An; Trần Minh Thư | 16h | 2,100,000 | 2,100,000 |
| 71 | 1.5.2 | 5.2. Viết báo cáo tổng kết dự án |  | 3d | 2026-10-26 | 2026-10-28 | 70 | 2026-10-26 | 2026-10-28 | 3d | 0d | Nguyễn Hoàng An; Trần Minh Thư | 48h | 6,300,000 | 6,300,000 |
| 72 | 1.5.3 | 5.3. Thanh lý hợp đồng và đóng dự án |  | 1d | 2026-10-29 | 2026-10-29 | 71 | 2026-10-29 | 2026-10-29 | 1d | 0d | Nguyễn Hoàng An | 8h | 1,500,000 | 1,500,000 |
| 73 | 1.6 | 6. Họp định kì | manual | 1d? | 2025-12-01 | 2025-12-01 |  | 2025-12-01 | 2025-12-01 | 1d? |  |  |  |  |  |
